# Пример плана проекта

How a schedule from MS Project changed from version to version. A marks actual dates.

## Version 1 (saved 2024-03-02, file Внедрение информационной системы.mpp)

| ID | WBS | Task | Duration | Start | Finish | Predecessors | Total float |
| --- | --- | --- | --- | --- | --- | --- | --- |
| 1 | 1 | **Подготовка к проекту** | 7d | 2019-10-17 | 2019-10-25 |  | 0d |
| 2 |  | Анализ целей и сбор информации для составления планов и устава проекта | 3d | 2019-10-17 | 2019-10-21 |  | 0d |
| 3 |  | Разработка устава проекта | 3d | 2019-10-22 | 2019-10-24 | 2 | 0d |
| 4 |  | Согласование устава проекта | 1d | 2019-10-25 | 2019-10-25 | 3 | 0d |
| 5 | 2 | **Анализ и моделирование** | 25d | 2019-10-25 | 2019-11-29 |  | 0d |
| 6 |  | Предоплата этапа "Анализ и моделирование" | 0d | 2019-10-25 | 2019-10-25 | 4 | 0d |
| 7 |  | Совещания по ознакомлению ФЗ с методами работы | 1d | 2019-10-28 | 2019-10-28 | 6 | 0d |
| 8 |  | Интервьюирование ФЗ | 4d | 2019-10-29 | 2019-11-01 | 7 | 0d |
| 9 |  | Обучение ФЗ и моделирование процессов заказчика в типовом решении | 5d | 2019-11-04 | 2019-11-08 | 8 | 0d |
| 10 |  | Составление и согласование с ФЗ функциональных требований, их классификация и ранжирование | 5d | 2019-11-11 | 2019-11-15 | 9 | 0d |
| 11 |  | Согласование и подписание ФТ | 3d | 2019-11-18 | 2019-11-20 | 10 | 0d |
| 12 |  | Подписание Акта по Этапу "Анализ и моделирование" | 1d | 2019-11-21 | 2019-11-21 | 11 | 0d |
| 13 |  | Окончательная оплата Этапа "Анализ и моделирование" | 1d | 2019-11-29 | 2019-11-29 | 12FS+5d | 63d |
| 14 | 3 | **Проектирование** | 19d? | 2019-11-22 | 2019-12-18 |  | 0d |
| 15 |  | Предоплата этапа "Проектирование" | 1d? | 2019-11-22 | 2019-11-22 | 12 | 0d |
| 16 |  | Разработка технического задания | 10d | 2019-11-25 | 2019-12-06 | 15 | 0d |
| 17 |  | Согласование и подписание ТЗ | 1d? | 2019-12-09 | 2019-12-09 | 16 | 0d |
| 18 |  | Подписание акта по этапу "Проектирование" | 1d? | 2019-12-10 | 2019-12-10 | 17 | 0d |
| 19 |  | Окончательная оплата Этапа "Проектирование" | 1d? | 2019-12-18 | 2019-12-18 | 18FS+5d | 50d |
| 20 | 4 | **Конфигурирование ПО** | 22d | 2019-12-11 | 2020-01-09 |  | 0d |
| 21 |  | Предоплата этапа "Конфигурирование ПО" | 1d | 2019-12-11 | 2019-12-11 | 18 | 0d |
| 22 |  | Разработка тестовых примеров | 5d | 2019-12-11 | 2019-12-17 | 18 | 7d |
| 23 |  | Конфигурирование изменений типовой конфигурации | 10d | 2019-12-12 | 2019-12-25 | 21, 22FF-1d | 0d |
| 24 |  | Тестирование и устранение ошибок | 5d | 2019-12-26 | 2020-01-01 | 23 | 0d |
| 25 |  | Подписание протоколов тестирования | 1d | 2020-01-02 | 2020-01-02 | 24 | 0d |
| 26 |  | Подписание акта по этапу "Конфигурирование ПО" | 0d | 2020-01-02 | 2020-01-02 | 25 | 0d |
| 27 |  | Окончательный платеж по этапу "Конфигурирование" | 0d | 2020-01-09 | 2020-01-09 | 26FS+5d | 34d |
| 28 | 5 | **Подготовка к ОПЭ** | 12d | 2020-01-03 | 2020-01-20 |  | 0d |
| 29 |  | Предоплата этапа "Подготовка ОПЭ" | 1d | 2020-01-03 | 2020-01-03 | 26 | 0d |
| 30 |  | Развертывание системы на серверах заказчика | 1d | 2020-01-06 | 2020-01-06 | 29 | 4d |
| 31 |  | Обучение пользователей | 5d | 2020-01-06 | 2020-01-10 | 29 | 0d |
| 32 |  | Перенос перенос и выверка данных | 5d | 2020-01-13 | 2020-01-17 | 31, 30 | 0d |
| 33 |  | Подписание акта по этапу "Подготовка к ОПЭ" | 0d | 2020-01-17 | 2020-01-17 | 32 | 0d |
| 34 |  | Окончательная оплата этапа "Подготовка к ОПЭ" | 1d | 2020-01-20 | 2020-01-20 | 33 | 27d |
| 35 | 6 | **ОПЭ** | 23d? | 2020-01-20 | 2020-02-19 |  | 0d |
| 36 |  | Предоплата по этапу "ОПЭ" | 1d? | 2020-01-20 | 2020-01-20 | 33 | 0d |
| 37 |  | Консультирование пользователей в ходе ОПЭ | 20d | 2020-01-21 | 2020-02-17 | 36 | 0d |
| 38 |  | Исправление обнаруженных ошибок | 20d | 2020-01-21 | 2020-02-17 | 36 | 0d |
| 39 |  | Подписание акта об окончании "ОПЭ" | 1d | 2020-02-18 | 2020-02-18 | 38, 37 | 0d |
| 40 |  | Окончательный платеж по этапу "ОПЭ" | 1d | 2020-02-19 | 2020-02-19 | 39 | 5d |
| 41 | 7 | **Завершение проекта** | 6d | 2020-02-19 | 2020-02-26 |  | 0d |
| 42 |  | Подготовка и подписание у клиента отзыва | 5d | 2020-02-19 | 2020-02-25 | 39 | 0d |
| 43 |  | Размещение всех материалов по проекту в архиве | 1d | 2020-02-26 | 2020-02-26 | 42 | 0d |

## Version 2 (saved 2024-03-06, file Проект 1.mpp)

Last finish 2020-02-26 → 2024-07-16 (+1602d). Complete tasks 0 → 36.

Changed:

| ID | Task | Start | Finish | Duration | Complete | Total float | Other |
| --- | --- | --- | --- | --- | --- | --- | --- |
| 1 | **Подготовка к проекту** | 2019-10-17 → 2024-03-06 A (+1602d) | 2019-10-25 → 2024-03-14 A (+1602d) | 7d → 6d | 0% → 100% | 0d → none |  |
| 2 | Анализ целей и сбор информации для составления проекта | 2019-10-17 → 2024-03-06 A (+1602d) | 2019-10-21 → 2024-03-08 A (+1600d) |  | 0% → 100% | 0d → none | was named Анализ целей и сбор информации для составления планов и устава проекта; resources Аналитик; РП Заказчика; РП Исполнителя; ФЗ → Аналитик; РП Заказчика; РП Исполнителя |
| 3 | Разработка проекта | 2019-10-22 → 2024-03-11 A (+1602d) | 2019-10-24 → 2024-03-13 A (+1602d) |  | 0% → 100% | 0d → none | was named Разработка устава проекта |
| 4 | Согласование проекта | 2019-10-25 → 2024-03-14 A (+1602d) | 2019-10-25 → 2024-03-14 A (+1602d) |  | 0% → 100% | 0d → none | was named Согласование устава проекта |
| 5 | **Анализ и моделирование** | 2019-10-25 → 2024-03-14 A (+1602d) | 2019-11-29 → 2024-04-18 A (+1602d) |  | 0% → 100% | 0d → none |  |
| 6 | Предоплата этапа "Анализ и моделирование" | 2019-10-25 → 2024-03-14 A (+1602d) | 2019-10-25 → 2024-03-14 A (+1602d) |  | 0% → 100% | 0d → none |  |
| 7 | Совещания по ознакомлению с работой | 2019-10-28 → 2024-03-15 A (+1600d) | 2019-10-28 → 2024-03-15 A (+1600d) |  | 0% → 100% | 0d → none | was named Совещания по ознакомлению ФЗ с методами работы; resources Аналитик; Пользователи; РП Заказчика; ФЗ → Аналитик; Пользователи; РП Заказчика |
| 8 | Интервьюирование | 2019-10-29 → 2024-03-18 A (+1602d) | 2019-11-01 → 2024-03-21 A (+1602d) |  | 0% → 100% | 0d → none | was named Интервьюирование ФЗ; resources Аналитик; ФЗ → Аналитик |
| 9 | Обучение и моделирование процессов заказчика в типовом решении | 2019-11-04 → 2024-03-22 A (+1600d) | 2019-11-08 → 2024-03-28 A (+1602d) |  | 0% → 100% | 0d → none | was named Обучение ФЗ и моделирование процессов заказчика в типовом решении; resources Аналитик; ФЗ → Аналитик |
| 10 | Составление и согласование с функциональными требованиями | 2019-11-11 → 2024-03-29 A (+1600d) | 2019-11-15 → 2024-04-04 A (+1602d) |  | 0% → 100% | 0d → none | was named Составление и согласование с ФЗ функциональных требований, их классификация и ранжирование; resources Аналитик; ФЗ → Аналитик |
| 11 | Согласование и подписание ФТ | 2019-11-18 → 2024-04-05 A (+1600d) | 2019-11-20 → 2024-04-09 A (+1602d) |  | 0% → 100% | 0d → none |  |
| 12 | Подписание Акта по Этапу "Анализ и моделирование" | 2019-11-21 → 2024-04-10 A (+1602d) | 2019-11-21 → 2024-04-10 A (+1602d) |  | 0% → 100% | 0d → none |  |
| 13 | Окончательная оплата Этапа "Анализ и моделирование" | 2019-11-29 → 2024-04-18 A (+1602d) | 2019-11-29 → 2024-04-18 A (+1602d) |  | 0% → 100% | 63d → none |  |
| 14 | **Проектирование** | 2019-11-22 → 2024-04-11 A (+1602d) | 2019-12-18 → 2024-05-07 A (+1602d) | 19d? → 18d? | 0% → 100% | 0d → none |  |
| 15 | Предоплата этапа "Проектирование" | 2019-11-22 → 2024-04-11 A (+1602d) | 2019-11-22 → 2024-04-11 A (+1602d) |  | 0% → 100% | 0d → none |  |
| 16 | Разработка ТЗ | 2019-11-25 → 2024-04-12 A (+1600d) | 2019-12-06 → 2024-04-25 A (+1602d) |  | 0% → 100% | 0d → none | was named Разработка технического задания |
| 17 | Согласование и подписание ТЗ | 2019-12-09 → 2024-04-26 A (+1600d) | 2019-12-09 → 2024-04-26 A (+1600d) |  | 0% → 100% | 0d → none | resources Аналитик; ФЗ → Аналитик |
| 18 | Подписание акта по этапу "Проектирование" | 2019-12-10 → 2024-04-29 A (+1602d) | 2019-12-10 → 2024-04-29 A (+1602d) |  | 0% → 100% | 0d → none |  |
| 19 | Окончательная оплата Этапа "Проектирование" | 2019-12-18 → 2024-05-07 A (+1602d) | 2019-12-18 → 2024-05-07 A (+1602d) |  | 0% → 100% | 50d → none |  |
| 20 | **Конфигурирование ПО** | 2019-12-11 → 2024-04-30 A (+1602d) | 2020-01-09 → 2024-05-29 A (+1602d) | 22d → 20d | 0% → 100% | 0d → none |  |
| 21 | Предоплата этапа "Конфигурирование ПО" | 2019-12-11 → 2024-04-30 A (+1602d) | 2019-12-11 → 2024-04-30 A (+1602d) |  | 0% → 100% | 0d → none |  |
| 22 | Разработка тестовых примеров | 2019-12-11 → 2024-04-30 A (+1602d) | 2019-12-17 → 2024-05-06 A (+1602d) |  | 0% → 100% | 7d → none | resources ФЗ → none |
| 23 | Конфигурирование изменений типовой конфигурации | 2019-12-12 → 2024-05-01 A (+1602d) | 2019-12-25 → 2024-05-14 A (+1602d) |  | 0% → 100% | 0d → none |  |
| 24 | Тестирование и устранение ошибок | 2019-12-26 → 2024-05-15 A (+1602d) | 2020-01-01 → 2024-05-21 A (+1602d) |  | 0% → 100% | 0d → none |  |
| 25 | Подписание протоколов тестирования | 2020-01-02 → 2024-05-22 A (+1602d) | 2020-01-02 → 2024-05-22 A (+1602d) |  | 0% → 100% | 0d → none | resources Аналитик; ФЗ → Аналитик |
| 26 | Подписание акта по этапу "Конфигурирование ПО" | 2020-01-02 → 2024-05-22 A (+1602d) | 2020-01-02 → 2024-05-22 A (+1602d) |  | 0% → 100% | 0d → none |  |
| 27 | Окончательный платеж по этапу "Конфигурирование" | 2020-01-09 → 2024-05-29 A (+1602d) | 2020-01-09 → 2024-05-29 A (+1602d) |  | 0% → 100% | 34d → none |  |
| 28 | **Подготовка к ОПЭ** | 2020-01-03 → 2024-05-23 A (+1602d) | 2020-01-20 → 2024-06-07 A (+1600d) |  | 0% → 100% | 0d → none |  |
| 29 | Предоплата этапа "Подготовка ОПЭ" | 2020-01-03 → 2024-05-23 A (+1602d) | 2020-01-03 → 2024-05-23 A (+1602d) |  | 0% → 100% | 0d → none |  |
| 30 | Развертывание системы на серверах заказчика | 2020-01-06 → 2024-05-24 A (+1600d) | 2020-01-06 → 2024-05-24 A (+1600d) |  | 0% → 100% | 4d → none |  |
| 31 | Обучение пользователей | 2020-01-06 → 2024-05-24 A (+1600d) | 2020-01-10 → 2024-05-30 A (+1602d) |  | 0% → 100% | 0d → none |  |
| 32 | Перенос и выверка данных | 2020-01-13 → 2024-05-31 A (+1600d) | 2020-01-17 → 2024-06-06 A (+1602d) |  | 0% → 100% | 0d → none | was named Перенос перенос и выверка данных |
| 33 | Подписание акта по этапу "Подготовка к ОПЭ" | 2020-01-17 → 2024-06-06 A (+1602d) | 2020-01-17 → 2024-06-06 A (+1602d) |  | 0% → 100% | 0d → none |  |
| 34 | Окончательная оплата этапа "Подготовка к ОПЭ" | 2020-01-20 → 2024-06-07 A (+1600d) | 2020-01-20 → 2024-06-07 A (+1600d) |  | 0% → 100% | 27d → none |  |
| 35 | **Оптыно-промышленная эксплуатация** | 2020-01-20 → 2024-06-07 A (+1600d) | 2020-02-19 → 2024-07-09 A (+1602d) |  | 0% → 100% | 0d → none | was named ОПЭ |
| 36 | Предоплата по этапу "ОПЭ" | 2020-01-20 → 2024-06-07 A (+1600d) | 2020-01-20 → 2024-06-07 A (+1600d) |  | 0% → 100% | 0d → none |  |
| 37 | Консультирование пользователей в ходе ОПЭ | 2020-01-21 → 2024-06-10 A (+1602d) | 2020-02-17 → 2024-07-05 A (+1600d) |  | 0% → 100% | 0d → none |  |
| 38 | Исправление обнаруженных ошибок | 2020-01-21 → 2024-06-10 A (+1602d) | 2020-02-17 → 2024-07-05 A (+1600d) |  | 0% → 100% | 0d → none |  |
| 39 | Подписание акта об окончании "ОПЭ" | 2020-02-18 → 2024-07-08 A (+1602d) | 2020-02-18 → 2024-07-08 A (+1602d) |  | 0% → 100% | 0d → none |  |
| 40 | Окончательный платеж по этапу "ОПЭ" | 2020-02-19 → 2024-07-09 A (+1602d) | 2020-02-19 → 2024-07-09 A (+1602d) |  | 0% → 100% | 5d → none |  |
| 41 | **Завершение проекта** | 2020-02-19 → 2024-07-09 A (+1602d) | 2020-02-26 → 2024-07-16 A (+1602d) |  | 0% → 100% | 0d → none |  |
| 42 | Подготовка и подписание у клиента отзыва | 2020-02-19 → 2024-07-09 A (+1602d) | 2020-02-25 → 2024-07-15 A (+1602d) |  | 0% → 100% | 0d → none |  |
| 43 | Размещение всех материалов по проекту в архиве | 2020-02-26 → 2024-07-16 A (+1602d) | 2020-02-26 → 2024-07-16 A (+1602d) |  | 0% → 100% | 0d → none |  |
